| slug | name | methodology | start_date | calendar | default_view | dependencies | baselines | risks | wbs_path | delivery_mode | status | percent_complete | assignee | duration | planned_start | estimate | is_milestone |
| --- | --- | --- | --- | --- | --- | --- | --- | --- | --- | --- | --- | --- | --- | --- | --- | --- | --- |
| bayside | Bayside Civic Center | WATERFALL | 2026-01-05 | site | SCHEDULE | 1.1 1.2 FS 0, 1.1 1.3 SS 0, 1.2 1.4 FS 0, 1.3 1.4 FS 0, 1.4 2.1 FS 0, 2.1 2.2 FS 0, 2.2 2.3 FS 0, 2.2 2.4 SS 0, 2.3 2.5 FF 0, 2.4 2.5 FF 0, 2.5 3.1 FS 0, 3.1 3.2 FS 0, 3.1 3.3 FS 0, 3.2 3.4 FF 0, 3.3 3.4 FF 0, 3.4 4.1 FS 0, 3.4 4.2 FS 0, 3.4 4.3 FS 0, 4.1 4.5 FS 0, 4.2 4.5 FS 0, 4.3 4.5 FS 0, 4.5 5.1 FS 0, 5.1 5.2 FS 0, 5.1 5.3 FS 0, 5.2 5.4 SF 0, 5.2 5.5 FS 0, 5.3 5.5 FS 0 | Contract baseline True 1.1 2026-01-05 2026-01-09 4, 1.2 2026-01-13 2026-01-19 6, 1.3 2026-01-25 2026-01-28 3, 1.4 2026-01-31 2026-02-02 2, 2.1 2026-02-04 2026-02-09 5, 2.2 2026-02-14 2026-02-20 6, 2.3 2026-02-26 2026-03-01 3, 2.4 2026-03-04 2026-03-07 3, 2.5 2026-03-10 2026-03-14 4, 3.1 2026-03-18 2026-03-26 8, 3.2 2026-04-03 2026-04-09 6, 3.3 2026-04-15 2026-04-22 7, 3.4 2026-04-29 2026-05-01 2, 4.1 2026-05-03 2026-05-10 7, 4.2 2026-05-17 2026-05-23 6, 4.3 2026-05-29 2026-06-06 8, 4.4 2026-06-14 2026-06-19 5, 4.5 2026-06-24 2026-06-27 3, 5.1 2026-06-30 2026-07-08 8, 5.2 2026-07-16 2026-07-22 6, 5.3 2026-07-28 2026-08-02 5, 5.5 2026-08-09 2026-08-12 3 | weather Weather delays outdoor phases OPEN 4 3 EXTERNAL MITIGATE sam 2.3, 2.4, supply-chain MEP equipment supply delay MITIGATING 3 5 EXTERNAL MITIGATE nadia 4.4, inspection-fail Framing inspection rework OPEN 2 4 TECHNICAL ACCEPT diego 3.4, labor Concrete crew availability OPEN 3 3 ORGANIZATIONAL MITIGATE tom 2.3 |  |  |  |  |  |  |  |  |  |
|  | · Site Prep |  |  |  |  |  |  |  | 1 | waterfall |  |  |  |  |  |  |  |
|  | · Mobilize site |  |  |  |  |  |  |  | 1.1 | waterfall | COMPLETE | 100.0 | nadia | 4 | 2026-01-05 | 3 4 8 |  |
|  | · Clear & grade |  |  |  |  |  |  |  | 1.2 | waterfall | COMPLETE | 100.0 | omar | 6 | 2026-01-13 | 4 6 11 |  |
|  | · Temporary utilities |  |  |  |  |  |  |  | 1.3 | waterfall | COMPLETE | 100.0 | diego | 3 | 2026-01-25 | 2 3 6 |  |
|  | · Site survey sign-off |  |  |  |  |  |  |  | 1.4 | waterfall | COMPLETE | 100.0 | tom | 2 | 2026-01-31 | 1 2 4 |  |
|  | · Foundation |  |  |  |  |  |  |  | 2 | waterfall |  |  |  |  |  |  |  |
|  | · Excavate footings |  |  |  |  |  |  |  | 2.1 | waterfall | COMPLETE | 100.0 | omar | 5 | 2026-02-04 | 4 5 10 |  |
|  | · Rebar & formwork |  |  |  |  |  |  |  | 2.2 | waterfall | COMPLETE | 100.0 | diego | 6 | 2026-02-14 | 4 6 11 |  |
|  | · Pour east footing |  |  |  |  |  |  |  | 2.3 | waterfall | COMPLETE | 100.0 | tom | 3 | 2026-02-26 | 2 3 6 |  |
|  | · Pour west footing |  |  |  |  |  |  |  | 2.4 | waterfall | COMPLETE | 100.0 | nadia | 3 | 2026-03-04 | 2 3 6 |  |
|  | · Cure & strip forms |  |  |  |  |  |  |  | 2.5 | waterfall | COMPLETE | 100.0 | omar | 4 | 2026-03-10 | 3 4 8 |  |
|  | · Framing |  |  |  |  |  |  |  | 3 | waterfall |  |  |  |  |  |  |  |
|  | · Steel erection |  |  |  |  |  |  |  | 3.1 | waterfall | IN_PROGRESS | 35.0 | diego | 8 | 2026-03-18 | 6 8 15 |  |
|  | · Floor decking |  |  |  |  |  |  |  | 3.2 | waterfall | IN_PROGRESS | 35.0 | tom | 6 | 2026-04-03 | 4 6 11 |  |
|  | · Roof structure |  |  |  |  |  |  |  | 3.3 | waterfall | IN_PROGRESS | 35.0 | nadia | 7 | 2026-04-15 | 5 7 13 |  |
|  | · Framing inspection |  |  |  |  |  |  |  | 3.4 | waterfall | IN_PROGRESS | 35.0 | omar | 2 | 2026-04-29 | 1 2 4 |  |
|  | · MEP |  |  |  |  |  |  |  | 4 | waterfall |  |  |  |  |  |  |  |
|  | · Rough-in electrical |  |  |  |  |  |  |  | 4.1 | waterfall | NOT_STARTED | 0.0 | tom | 7 | 2026-05-03 | 5 7 13 |  |
|  | · Rough-in plumbing |  |  |  |  |  |  |  | 4.2 | waterfall | NOT_STARTED | 0.0 | nadia | 6 | 2026-05-17 | 4 6 11 |  |
|  | · HVAC ductwork |  |  |  |  |  |  |  | 4.3 | waterfall | NOT_STARTED | 0.0 | omar | 8 | 2026-05-29 | 6 8 15 |  |
|  | · MEP equipment delivery |  |  |  |  |  |  |  | 4.4 | waterfall | NOT_STARTED | 0.0 | diego | 5 | 2026-06-14 | 4 5 10 |  |
|  | · MEP inspection |  |  |  |  |  |  |  | 4.5 | waterfall | NOT_STARTED | 0.0 | tom | 3 | 2026-06-24 | 2 3 6 |  |
|  | · Finish-out |  |  |  |  |  |  |  | 5 | waterfall |  |  |  |  |  |  |  |
|  | · Drywall & paint |  |  |  |  |  |  |  | 5.1 | waterfall | NOT_STARTED | 0.0 | nadia | 8 | 2026-06-30 | 6 8 15 |  |
|  | · Flooring |  |  |  |  |  |  |  | 5.2 | waterfall | NOT_STARTED | 0.0 | omar | 6 | 2026-07-16 | 4 6 11 |  |
|  | · Fixtures & casework |  |  |  |  |  |  |  | 5.3 | waterfall | NOT_STARTED | 0.0 | diego | 5 | 2026-07-28 | 4 5 10 |  |
|  | · Commissioning start |  |  |  |  |  |  |  | 5.4 | milestone | NOT_STARTED | 0.0 | tom |  |  |  | True |
|  | · Final inspection & handover |  |  |  |  |  |  |  | 5.5 | waterfall | NOT_STARTED | 0.0 | nadia | 3 | 2026-08-09 | 2 3 6 |  |
